# PacMan

Schedule from MS Project, 2022-09-09 to 2022-12-23.

## Calendars

- Standard: Mon-Thu off; Fri 08:20-09:50, 10:05-11:35, 13:15-14:45; Sat-Sun off. Exceptions (off unless hours are given): 2022-11-04 (Vacanze autunnali).
- Documentazione: Mon-Thu off; Fri 13:15-14:45; Sat-Sun off. Exceptions (off unless hours are given): 2022-11-04 (Vacanze autunnali).
- Unity: Mon-Thu off; Fri 08:20-09:20; Sat-Sun off. Exceptions (off unless hours are given): 2022-11-04 (Vacanze autunnali).

## Resources

| Resource |
| --- |
| Luca Fumasoli |
| Michael Dobeson |

## Schedule

| ID | WBS | Task | Type | Duration | Start | Finish | Predecessors | Baseline start | Baseline finish | Baseline duration | Total slack | Free slack | Constraint | Calendar | Resources | Work |
| --- | --- | --- | --- | --- | --- | --- | --- | --- | --- | --- | --- | --- | --- | --- | --- | --- |
| 1 | 1 | **Unity's Pac-Man** |  | 8.35d | 2022-09-09 09:00 | 2022-12-23 14:45 |  | 2022-09-09 09:00 | 2022-12-23 14:45 | 8.35d | 0d |  |  |  |  | 110.5h |
| 2 | 1.1 | **Analisi** |  | 1.44d | 2022-09-09 09:00 | 2022-09-23 13:25 |  | 2022-09-09 09:00 | 2022-09-23 13:25 | 1.44d | 1.42d |  |  |  |  | 18h |
| 3 | 1.1.1 | Stesura QdC |  | 1.5h | 2022-09-09 09:00 | 2022-09-09 10:45 |  | 2022-09-09 09:00 | 2022-09-09 10:45 | 1.5h | 0.92d | 0d |  |  | Luca Fumasoli; Michael Dobeson | 3h |
| 4 | 1.1.2 | Gantt preventivo |  | 3h | 2022-09-09 10:45 | 2022-09-16 09:00 | 3 | 2022-09-09 10:45 | 2022-09-16 09:00 | 3h | 0.92d | 0d |  |  | Luca Fumasoli; Michael Dobeson | 6h |
| 5 | 1.1.3 | Use Case |  | 2h | 2022-09-16 09:00 | 2022-09-16 11:15 | 4 | 2022-09-16 09:00 | 2022-09-16 11:15 | 2h | 7.54d |  |  |  | Luca Fumasoli | 2h |
| 6 | 1.1.4 | Requisiti |  | 3h | 2022-09-16 09:00 | 2022-09-16 13:55 | 4 | 2022-09-16 09:00 | 2022-09-16 13:55 | 3h | 0.92d | 0d |  |  | Michael Dobeson | 3h |
| 7 | 1.1.5 | Test case |  | 3h | 2022-09-16 13:55 | 2022-09-23 10:45 | 6 | 2022-09-16 13:55 | 2022-09-23 10:45 | 3h | 0.92d | 0d |  |  | Michael Dobeson | 3h |
| 8 | 1.1.6 | Abstract |  | 1h | 2022-09-23 10:45 | 2022-09-23 13:25 | 7 | 2022-09-23 10:45 | 2022-09-23 13:25 | 1h | 6.92d |  |  |  | Luca Fumasoli | 1h |
| 9 | 1.2 | **Progettazione** |  | 0.62d | 2022-09-23 10:45 | 2022-09-30 11:15 |  | 2022-09-23 10:45 | 2022-09-30 11:15 | 0.62d | 1.42d |  |  |  |  | 5h |
| 10 | 1.2.1 | Design interfacce |  | 3h | 2022-09-23 10:45 | 2022-09-30 09:00 | 7 | 2022-09-23 10:45 | 2022-09-30 09:00 | 3h | 0.92d | 0d |  |  | Luca Fumasoli | 3h |
| 11 | 1.2.2 | Diagramma delle classi |  | 2h | 2022-09-30 09:00 | 2022-09-30 11:15 | 10 | 2022-09-30 09:00 | 2022-09-30 11:15 | 2h | 0.92d | 0d |  |  | Michael Dobeson | 2h |
| 12 | 1.3 | **Implementazione** |  | 5.06d | 2022-09-30 09:00 | 2022-12-09 09:00 |  | 2022-09-30 09:00 | 2022-12-16 09:00 | 5.62d | 1.6d |  |  |  |  | 69.5h |
| 13 | 1.3.1 | Design personaggi |  | 2h | 2022-09-30 11:15 | 2022-10-07 08:30 | 11 | 2022-09-30 11:15 | 2022-10-07 08:30 | 2h | 0.92d | 0d |  |  | Luca Fumasoli | 2h |
| 14 | 1.3.2 | Algoritmo generazione mappa |  | 6h | 2022-10-07 08:30 | 2022-10-14 10:15 | 13 | 2022-10-07 08:30 | 2022-10-14 10:15 | 6h | 0.92d | 0d |  |  | Michael Dobeson | 6h |
| 15 | 1.3.3 | AI fantasma |  | 6h | 2022-10-14 10:15 | 2022-10-21 13:25 | 13, 14 | 2022-10-14 13:55 | 2022-10-28 09:00 | 6h | 0.92d | 0d |  |  | Michael Dobeson | 6h |
| 16 | 1.3.4 | Controlli movimento Pac-Man |  | 4h | 2022-10-21 13:25 | 2022-10-28 11:15 | 15 | 2022-10-14 13:55 | 2022-10-21 13:25 | 4h | 0.92d | 0d |  |  | Luca Fumasoli | 4h |
| 17 | 1.3.5 | Piazzamento pillole |  | 2h | 2022-10-21 13:25 | 2022-10-28 09:00 | 15 | 2022-10-14 10:15 | 2022-10-14 13:55 | 2h | 1.42d | 0d |  |  | Michael Dobeson | 2h |
| 18 | 1.3.6 | Animazioni personaggi |  | 2h | 2022-10-28 09:00 | 2022-10-28 11:15 | 17 | 2022-10-07 08:30 | 2022-10-07 10:45 | 2h | 1.42d | 0d |  |  | Michael Dobeson | 2h |
| 19 | 1.3.7 | Checkpoint | milestone | 0d | 2022-10-28 11:15 | 2022-10-28 11:15 | 18 | 2022-10-28 09:00 | 2022-10-28 09:00 | 0d | 1.42d | 0d |  |  |  |  |
| 20 | 1.3.8 | Perdita vita e respawn |  | 3h | 2022-10-28 11:15 | 2022-11-11 09:30 | 19 | 2022-10-28 09:00 | 2022-10-28 13:55 | 3h | 1.42d | 0d |  |  | Luca Fumasoli | 3h |
| 21 | 1.3.9 | Super-pillole |  | 6h | 2022-11-11 09:30 | 2022-11-18 11:15 | 20 | 2022-10-28 09:00 | 2022-11-11 10:45 | 6h | 1.42d | 0d |  |  | Michael Dobeson | 6h |
| 22 | 1.3.10 | Grafica pagina di gioco |  | 3h | 2022-11-18 11:15 | 2022-11-25 09:30 | 21 | 2022-11-18 14:25 | 2022-11-25 11:15 | 3h | 1.42d | 0d |  |  | Michael Dobeson; Luca Fumasoli | 6h |
| 23 | 1.3.11 | Grafica pagine di menu |  | 4h | 2022-11-18 11:15 | 2022-11-25 10:45 | 21 | 2022-11-18 14:25 | 2022-11-25 11:15 | 3h | 2.29d | 0d |  |  | Luca Fumasoli | 4h |
| 24 | 1.3.12 | Vincita gioco e creazione nuova mappa |  | 2h | 2022-11-25 10:45 | 2022-11-25 14:25 | 23 | 2022-11-11 10:45 | 2022-11-11 14:25 | 2h | 2.29d |  |  |  | Michael Dobeson | 2h |
| 25 | 1.3.13 | Game over |  | 2h | 2022-11-25 09:30 | 2022-11-25 13:25 | 22 | 2022-10-28 13:55 | 2022-11-11 08:30 | 1h | 1.42d | 0d |  |  | Luca Fumasoli | 2h |
| 26 | 1.3.14 | Pagina modifica parametri |  | 6h | 2022-11-25 13:25 | 2022-12-09 08:30 | 25 | 2022-11-25 11:15 | 2022-12-02 14:25 | 6h | 1.42d | 0d |  |  | Michael Dobeson | 6h |
| 27 | 1.3.15 | Salvataggio punteggio |  | 0.5h | 2022-12-09 08:30 | 2022-12-09 09:00 | 25, 26 | 2022-11-11 14:25 | 2022-11-18 14:25 | 4.5h | 1.6d |  | start no earlier than 2022-09-16 08:20 |  | Luca Fumasoli | 0.5h |
| 28 | 1.3.16 | Imparare unity |  | 9h | 2022-09-30 09:00 | 2022-12-09 09:00 | 10 | 2022-09-30 09:00 | 2022-12-16 09:00 | 10h | 0.29d |  | start no earlier than 2022-09-29 09:00 | Unity | Luca Fumasoli; Michael Dobeson | 18h |

| ID | WBS | Task | Type | Duration | Start | Finish | Predecessors | Baseline start | Baseline finish | Baseline duration | Total slack | Free slack | Constraint | Calendar | Resources | Work |
| --- | --- | --- | --- | --- | --- | --- | --- | --- | --- | --- | --- | --- | --- | --- | --- | --- |
| 29 | 1.4 | **Test** |  | 0.25d | 2022-12-09 08:30 | 2022-12-09 10:45 |  | 2022-12-02 14:25 | 2022-12-16 09:30 | 0.75d | 1.42d |  |  |  |  | 2h |
| 30 | 1.4.1 | Test |  | 2h | 2022-12-09 08:30 | 2022-12-09 10:45 | 26 | 2022-12-02 14:25 | 2022-12-09 10:15 | 2h | 1.42d | 0d |  |  | Luca Fumasoli | 2h |
| 31 | 1.4.2 | Risolvere problemi | milestone | 0h | 2022-12-09 10:45 | 2022-12-09 10:45 | 30 | 2022-12-09 10:15 | 2022-12-16 09:30 | 4h | 1.42d |  |  |  | Luca Fumasoli |  |
| 32 | 1.5 | Documentazione |  | 18h | 2022-09-30 13:15 | 2022-12-23 14:45 |  | 2022-09-30 13:15 | 2022-12-23 14:45 | 18h | 0d |  | start no earlier than 2022-09-26 09:00 | Documentazione | Luca Fumasoli; Michael Dobeson | 16h |
